# 闲逛Recycle

How a schedule from MS Project changed from version to version. A marks actual dates.

## Version 1 (saved 2020-04-24)

Note of the change: add 人力资源确定

| ID | WBS | Task | Duration | Start | Finish | Predecessors | Constraint |
| --- | --- | --- | --- | --- | --- | --- | --- |
| 1 | 1 | **启动** | 5d | 2020-03-02 | 2020-03-06 |  | as late as possible |
| 2 |  | 组建核心团队 | 1d | 2020-03-02 | 2020-03-02 |  |  |
| 3 |  | 干系人分析 | 1d | 2020-03-03 | 2020-03-03 |  |  |
| 4 |  | 里程碑计划 | 1d | 2020-03-04 | 2020-03-04 |  |  |
| 5 |  | 制定项目章程 | 1d | 2020-03-05 | 2020-03-05 | 2, 3, 4 |  |
| 6 |  | 项目启动大会 | 1d | 2020-03-06 | 2020-03-06 | 5 |  |
| 7 | 2 | **规划** | 35d | 2020-03-09 | 2020-04-24 |  | as late as possible |
| 8 | 2.1 | **规划范围** | 11d | 2020-03-09 | 2020-03-23 |  | as late as possible |
| 9 |  | 制定需求说明书 | 5d | 2020-03-09 | 2020-03-13 | 6 |  |
| 10 |  | 界面设计 | 3d | 2020-03-16 | 2020-03-18 | 9 |  |
| 11 |  | 详细设计说明书 | 3d | 2020-03-16 | 2020-03-18 | 9 |  |
| 12 |  | 项目范围说明书 | 3d | 2020-03-16 | 2020-03-18 | 9 |  |
| 13 |  | 创建WBS | 2d | 2020-03-19 | 2020-03-20 | 10, 11, 12 |  |
| 14 |  | 形成范围基准 | 1d | 2020-03-23 | 2020-03-23 | 13 |  |
| 15 | 2.2 | **规划时间** | 6d | 2020-03-24 | 2020-03-31 |  | as late as possible |
| 16 |  | 排列工作包顺序 | 1d | 2020-03-24 | 2020-03-24 | 14 |  |
| 17 |  | 估算资源 | 1d | 2020-03-25 | 2020-03-25 | 16 |  |
| 18 |  | 估算持续时间 | 2d | 2020-03-26 | 2020-03-27 | 17 |  |
| 19 |  | 制定进度计划 | 1d | 2020-03-30 | 2020-03-30 | 18 |  |
| 20 |  | 形成进度基准 | 1d | 2020-03-31 | 2020-03-31 | 19 |  |
| 21 | 2.3 | **规划成本** | 5d | 2020-04-01 | 2020-04-07 |  | as late as possible |
| 22 |  | 项目成本估算 | 2d | 2020-04-01 | 2020-04-02 | 20 |  |
| 23 |  | 项目预算 | 2d | 2020-04-03 | 2020-04-06 | 22 |  |
| 24 |  | 形成范围基准 | 1d | 2020-04-07 | 2020-04-07 | 23 |  |
| 25 | 2.4 | **规划质量** | 8d | 2020-03-24 | 2020-04-02 |  | as late as possible |
| 26 |  | 制定测试计划 | 2d | 2020-03-24 | 2020-03-25 | 14 |  |
| 27 |  | 制定测试用例 | 6d | 2020-03-26 | 2020-04-02 | 26 |  |
| 28 | 2.5 | **规划人力资源** | 4d | 2020-04-08 | 2020-04-13 |  | as late as possible |
| 29 |  | 制定人力资源计划 | 2d | 2020-04-08 | 2020-04-09 | 17 |  |
| 30 |  | 制定人员配备管理计划 | 2d | 2020-04-10 | 2020-04-13 | 29 |  |
| 31 | 2.6 | **规划沟通** | 2d | 2020-04-14 | 2020-04-15 |  | as late as possible |
| 32 |  | 制定沟通管理计划 | 2d | 2020-04-14 | 2020-04-15 | 30 |  |
| 33 | 2.7 | **规划采购** | 3d | 2020-04-16 | 2020-04-20 |  | as late as possible |
| 34 |  | 自制外购分析 | 1d | 2020-04-16 | 2020-04-16 | 17 |  |
| 35 |  | 制定采购文件 | 2d | 2020-04-17 | 2020-04-20 | 34 |  |
| 36 | 2.8 | **规划风险** | 3d | 2020-04-21 | 2020-04-23 |  | as late as possible |
| 37 |  | 识别风险 | 1d | 2020-04-21 | 2020-04-21 | 15, 21, 25, 28, 31, 33 |  |
| 38 |  | 风险分析 | 1d | 2020-04-22 | 2020-04-22 | 37 |  |
| 39 |  | 制定风险登记册 | 1d | 2020-04-23 | 2020-04-23 | 38 |  |
| 40 |  | 规划整合 | 1d | 2020-04-24 | 2020-04-24 | 39 |  |
| 41 | 3 | **执行与监控** | 36d | 2020-04-27 | 2020-06-15 |  | as late as possible |
| 42 |  | 组建项目团队 | 2d | 2020-04-27 | 2020-04-28 | 7 |  |
| 43 | 3.2 | **项目执行** | 29d | 2020-04-29 | 2020-06-08 |  | as late as possible |
| 44 | 3.2.1 | **用户模块** | 29d | 2020-04-29 | 2020-06-08 |  | as late as possible |
| 45 |  | 注册登录 | 3d | 2020-04-29 | 2020-05-01 | 42 |  |
| 46 |  | 首页 | 2d | 2020-05-05 | 2020-05-06 | 45 |  |
| 47 |  | 浏览商品 | 2d | 2020-05-07 | 2020-05-08 | 46 |  |
| 48 |  | 搜索商品 | 2d | 2020-05-11 | 2020-05-12 | 47 |  |
| 49 |  | 购物车 | 2d | 2020-05-13 | 2020-05-14 | 48 |  |
| 50 |  | 下单 | 2d | 2020-05-15 | 2020-05-18 | 49 |  |
| 51 |  | 个人配置 | 2d | 2020-05-19 | 2020-05-20 | 50 |  |
| 52 |  | 我的 | 2d | 2020-05-21 | 2020-05-22 | 51 |  |
| 53 |  | 关于卖家 | 2d | 2020-05-25 | 2020-05-26 | 52 |  |
| 54 |  | 消息 | 2d | 2020-05-27 | 2020-05-28 | 53 |  |
| 55 |  | 卖闲置 | 2d | 2020-05-29 | 2020-06-01 | 54 |  |
| 56 |  | 商品管理 | 2d | 2020-06-02 | 2020-06-03 | 55 |  |
| 57 |  | 订单处理 | 1d | 2020-06-04 | 2020-06-04 | 56 |  |
| 58 |  | 统计 | 2d | 2020-06-05 | 2020-06-08 | 57 |  |
| 59 | 3.2.2 | **管理员模块** | 9d | 2020-05-05 | 2020-05-15 |  | as late as possible |
| 60 |  | 商家审核 | 3d | 2020-05-05 | 2020-05-07 | 42 |  |
| 61 |  | 促销活动 | 2d | 2020-05-08 | 2020-05-11 | 60 |  |
| 62 |  | 统计分析 | 2d | 2020-05-12 | 2020-05-13 | 61 |  |
| 63 |  | 备份 | 2d | 2020-05-14 | 2020-05-15 | 62 |  |
| 64 | 3.3 | **项目监控** | 4d | 2020-04-29 | 2020-05-04 |  | as late as possible |
| 65 |  | 各项指标监控 | 1d | 2020-04-29 | 2020-04-29 | 42 |  |
| 66 |  | 监控评审 | 1d | 2020-04-30 | 2020-04-30 | 65 |  |
| 67 |  | 变更评审 | 1d | 2020-05-01 | 2020-05-01 | 66 |  |
| 68 |  | 例会 | 1d | 2020-05-04 | 2020-05-04 | 42 |  |
| 69 | 3.4 | **管理干系人** | 3d | 2020-05-05 | 2020-05-07 |  | as late as possible |
| 70 |  | 发布项目信息 | 1d | 2020-05-05 | 2020-05-05 | 42 |  |

| ID | WBS | Task | Duration | Start | Finish | Predecessors | Constraint |
| --- | --- | --- | --- | --- | --- | --- | --- |
| 71 |  | 报告监控指标 | 1d | 2020-05-06 | 2020-05-06 | 42 |  |
| 72 |  | 干系人沟通 | 1d | 2020-05-07 | 2020-05-07 | 42 |  |
| 73 | 3.5 | **团队建设** | 3d | 2020-06-10 | 2020-06-12 |  | as late as possible |
| 74 |  | 培训 | 1d | 2020-06-10 | 2020-06-10 | 42 |  |
| 75 |  | 娱乐活动 | 1d | 2020-06-11 | 2020-06-11 | 42 |  |
| 76 |  | 沟通 | 1d | 2020-06-12 | 2020-06-12 | 42 |  |
| 77 |  | 采购 | 15d | 2020-05-08 | 2020-05-28 | 42 |  |
| 78 |  | 项目验收 | 1d | 2020-06-15 | 2020-06-15 | 43 |  |
| 79 | 4 | **收尾** | 4d | 2020-06-16 | 2020-06-19 |  | as late as possible |
| 80 |  | 项目终验 | 1d | 2020-06-16 | 2020-06-16 | 78 |  |
| 81 |  | 结束采购 | 1d | 2020-06-17 | 2020-06-17 | 78 |  |
| 82 |  | 项目内部收尾 | 2d | 2020-06-18 | 2020-06-19 | 78 |  |

## Version 2 (saved 2020-04-25)

Note of the change: 人力资源确定

Last finish stays 2020-06-19.

Changed:

| ID | Task | Start | Finish | Duration | Other |
| --- | --- | --- | --- | --- | --- |
| 2 | 组建核心团队 |  |  |  | resources 孙玲; 高新月; 张引硕; 蒋晓伟 → 孙玲; UI专家; 张引硕; 高新月; 蒋晓伟 |
| 6 | 项目启动大会 |  |  |  | resources 孙玲; 高新月; 张引硕; 蒋晓伟 → 孙玲; UI专家; 高新月; 张引硕; 蒋晓伟 |
| 9 | 制定需求说明书 |  |  |  | resources 孙玲 → 高新月 |
| 10 | 界面设计 |  |  |  | resources 高新月; aa [200%] → UI专家; aa [200%] |
| 42 | 组建项目团队 |  |  |  | resources 蒋晓伟; 高新月; 张引硕; 孙玲 → 测试员1; 测试员2; 程序员1; 程序员2; 程序员3; 孙玲 |
| 45 | 注册登录 |  |  |  | resources 高新月 → 程序员1 |
| 46 | 首页 |  |  |  | resources 高新月 → 程序员1 |
| 47 | 浏览商品 |  |  |  | resources 高新月 → 程序员1 |
| 48 | 搜索商品 |  |  |  | resources 高新月 → 程序员1 |
| 49 | 购物车 |  |  |  | resources 高新月 → 程序员1 |
| 50 | 下单 |  |  |  | resources 高新月 → 程序员1 |
| 51 | 个人配置 |  |  |  | resources 高新月 → 程序员1 |
| 52 | 我的 |  |  |  | resources 张引硕 → 程序员2 |
| 53 | 关于卖家 |  |  |  | resources 张引硕 → 程序员2 |
| 54 | 消息 |  |  |  | resources 张引硕 → 程序员2 |
| 55 | 卖闲置 |  |  |  | resources 张引硕 → 程序员2 |
| 56 | 商品管理 |  |  |  | resources 张引硕 → 程序员2 |
| 57 | 订单处理 |  |  |  | resources 张引硕 → 程序员2 |
| 58 | 统计 |  |  |  | resources 张引硕 → 程序员2 |
| 59 | **管理员模块** | 2020-05-05 → 2020-04-29 (-6d) | 2020-05-15 → 2020-05-12 (-3d) | 9d → 10d |  |
| 60 | 商家审核 | 2020-05-05 → 2020-04-29 (-6d) | 2020-05-07 → 2020-05-01 (-6d) |  | resources 张引硕 → 程序员3 |
| 61 | 促销活动 | 2020-05-08 → 2020-05-05 (-3d) | 2020-05-11 → 2020-05-06 (-5d) |  | resources 张引硕 → 程序员3 |
| 62 | 统计分析 | 2020-05-12 → 2020-05-07 (-5d) | 2020-05-13 → 2020-05-08 (-5d) |  | resources 张引硕 → 程序员3 |
| 63 | 备份 | 2020-05-14 → 2020-05-11 (-3d) | 2020-05-15 → 2020-05-12 (-3d) |  | resources 张引硕 → 程序员3 |
| 65 | 各项指标监控 |  |  |  | resources 蒋晓伟; 孙玲 → 测试员1; 测试员2; 孙玲 |
| 66 | 监控评审 |  |  |  | resources 张引硕; 孙玲; 蒋晓伟 → 张引硕; 孙玲; 高新月; 蒋晓伟 |
| 67 | 变更评审 |  |  |  | resources 张引硕; 孙玲; 蒋晓伟 → 张引硕; 孙玲; 高新月; 蒋晓伟 |
| 68 | 例会 |  |  |  | resources 高新月; 蒋晓伟; 张引硕; 孙玲 → UI专家; 测试员1; 测试员2; 程序员1; 程序员2; 程序员3; 张引硕; 孙玲; 高新月; 蒋晓伟 |
| 74 | 培训 |  |  |  | resources 高新月; 蒋晓伟; 张引硕; 孙玲 → UI专家; 测试员1; 测试员2; 程序员1; 程序员2; 程序员3; 张引硕; 孙玲; 高新月; 蒋晓伟 |
| 75 | 娱乐活动 |  |  |  | resources 高新月; 蒋晓伟; 张引硕; 孙玲 → UI专家; 测试员1; 测试员2; 程序员1; 程序员2; 程序员3; 张引硕; 孙玲; 高新月; 蒋晓伟 |
| 76 | 沟通 |  |  |  | resources 高新月; 蒋晓伟; 张引硕; 孙玲 → UI专家; 测试员1; 测试员2; 程序员1; 程序员2; 程序员3; 张引硕; 孙玲; 高新月; 蒋晓伟 |
| 78 | 项目验收 |  |  |  | resources 高新月; 张引硕; 孙玲; 蒋晓伟 → UI专家; 张引硕; 孙玲; 高新月; 蒋晓伟 |
| 80 | 项目终验 |  |  |  | resources 高新月; 张引硕; 孙玲; 蒋晓伟 → UI专家; 张引硕; 孙玲; 高新月; 蒋晓伟 |
| 82 | 项目内部收尾 |  |  |  | resources 高新月; 蒋晓伟; 张引硕; 孙玲 → UI专家; 测试员1; 测试员2; 程序员1; 程序员2; 程序员3; 张引硕; 孙玲; 高新月; 蒋晓伟 |
